# 信宜市人民医院信息化建设

Schedule from a web Gantt chart, 2024-07-16 to 2024-08-30.
Every day is a working day

## Schedule

| ID | WBS | Task | Duration | Start | Finish | Complete |
| --- | --- | --- | --- | --- | --- | --- |
| 2 | 1 | **数据基座建设** | 46d | 2024-07-16 | 2024-08-30 | 47% |
| 3 | 1.1 | **医共体驾驶舱** | 27d | 2024-07-25 | 2024-08-20 | 94% |
| 4 | 1.1.1 | 茂名市健康平台统计指标梳理 | 7d | 2024-07-25 | 2024-07-31 | 100% |
| 5 | 1.1.2 | 医共体急救指标梳理 | 7d | 2024-07-31 | 2024-08-06 | 100% |
| 6 | 1.1.3 | 医共体指标计算逻辑 | 9d | 2024-08-01 | 2024-08-09 | 100% |
| 7 | 1.1.4 | 医共体驾驶舱交互设计 | 7d | 2024-08-01 | 2024-08-07 | 100% |
| 8 | 1.1.5 | 医共体驾驶舱视觉设计 | 7d | 2024-08-02 | 2024-08-08 | 100% |
| 9 | 1.1.6 | 茂名市平台指标数据爬取 | 16d | 2024-08-02 | 2024-08-17 | 100% |
| 10 | 1.1.7 | 医共体驾驶舱界面开发 | 13d | 2024-08-08 | 2024-08-20 | 70% |
| 11 | 1.2 | **慢病档案建立** | 46d | 2024-07-16 | 2024-08-30 | 49% |
| 12 | 1.2.1 | 省基卫数据清洗 | 4d | 2024-07-16 | 2024-07-19 | 100% |
| 13 | 1.2.2 | 省基卫数据入库 | 9d | 2024-07-18 | 2024-07-26 | 100% |
| 14 | 1.2.3 | 基层医生档案录入 | 9d | 2024-07-22 | 2024-07-30 | 100% |
| 15 | 1.2.4 | 病案系统数据清洗 | 12d | 2024-07-29 | 2024-08-09 | 70% |
| 16 | 1.2.5 | 病案系统数据入库 | 10d | 2024-08-07 | 2024-08-16 |  |
| 17 | 1.2.6 | i信医慢病管理数据接入 | 30d | 2024-08-01 | 2024-08-30 | 20% |
| 18 | 1.3 | **慢病档案服务** | 43d | 2024-07-19 | 2024-08-30 | 33% |
| 19 | 1.3.1 | 慢病档案系统功能开发 | 13d | 2024-07-19 | 2024-07-31 | 100% |
| 20 | 1.3.2 | 慢病档案功能测试 | 10d | 2024-07-29 | 2024-08-07 | 100% |
| 21 | 1.3.3 | 医务人员用户管理功能开发 | 14d | 2024-07-31 | 2024-08-13 | 100% |
| 22 | 1.3.4 | 医务人员用户管理功能测试 | 5d | 2024-08-12 | 2024-08-16 |  |
| 23 | 1.3.5 | 与i信医对接慢病档案服务 | 17d | 2024-08-07 | 2024-08-23 | 10% |
| 24 | 1.3.6 | 与i信医对接慢病管理服务 | 13d | 2024-08-15 | 2024-08-27 |  |
| 25 | 1.3.7 | 测试与i信医对接 | 11d | 2024-08-20 | 2024-08-30 |  |
| 26 | 1.3.8 | 与急救中心对接患者档案服务 | 17d | 2024-08-07 | 2024-08-23 | 10% |
| 27 | 1.3.9 | 与急救中心对接患者诊疗服务 | 13d | 2024-08-15 | 2024-08-27 |  |
| 28 | 1.3.10 | 测试与急救中心对接 | 11d | 2024-08-20 | 2024-08-30 |  |

| ID | WBS | Task | Duration | Start | Finish |
| --- | --- | --- | --- | --- | --- |
| 29 | 1.4 | **智慧安防** | 30d | 2024-08-01 | 2024-08-30 |
| 30 | 1.4.1 | 现场会演示点确认 | 30d | 2024-08-01 | 2024-08-30 |
